# FlexiTime

Schedule from GanttProject, 2004-09-13 to 2005-04-26.
FlexiTime
Gestion des emplois du Temps / Projet de Génie Logiciel / Informatique Réseaux 3° année / Ingénieurs 2000 - Université de Marne-La-Vallée

## Calendars

- Project calendar: Mon-Fri working; Sat-Sun off.

## Resources

| Resource | Group |
| --- | --- |
| Jérôme GUERS |  |
| Fabien APPERT | Secrétaire + Responsable Client |
| Adrien BOUVET | Site Web + Responsable Qualité |
| Valère FOREL | Responsable Développement & test |
| Guillaume GUERRIN | Responsable technique |
| Prâsad RAMASSAMY | Responsable Interface Graphique |

## Schedule

| ID | WBS | Task | Type | Duration | Start | Finish | Predecessors | Complete | Resources |
| --- | --- | --- | --- | --- | --- | --- | --- | --- | --- |
| 1 | 1 | Définition du nom d'équipe | milestone | 0d | 2004-09-13 | 2004-09-13 |  | 100% |  |
| 2 | 2 | Attribution des rôles | milestone | 0d | 2004-09-14 | 2004-09-14 |  | 100% |  |
| 3 | 3 | **Gestion du planning** |  | 161d | 2004-09-14 | 2005-04-26 | 2 | 40% |  |
| 4 | 3.1 | Répartition des tâches CDC |  | 3d | 2004-09-14 | 2004-09-16 |  | 100% | Jérôme GUERS |
| 5 | 3.2 | Choix de l'outil de gestion de projet |  | 8d | 2004-09-17 | 2004-09-28 |  | 100% | Jérôme GUERS |
| 6 | 3.3 | Définition de l'état d'avancement |  | 4d | 2004-09-26 | 2004-09-30 |  | 100% | Jérôme GUERS [30%] |
| 7 | 3.4 | Répartition des tâches futures |  | 149d | 2004-09-26 | 2005-04-21 |  | 37% | Jérôme GUERS [10%] |
| 8 | 3.5 | Suivi de l'avancement |  | 149d | 2004-09-26 | 2005-04-21 |  | 37% | Jérôme GUERS [10%] |
| 9 | 3.6 | Mise en place du tableau d'avancement |  | 4d | 2004-11-19 | 2004-11-24 |  | 100% | Jérôme GUERS [80%] |
| 10 | 3.7 | Répartition du développement et des tests |  | 2d | 2004-12-27 | 2004-12-28 |  |  | Jérôme GUERS [40%] |
| 11 | 4 | **Cahier Des Charges** |  | 17d | 2004-09-17 | 2004-10-11 |  | 100% |  |
| 12 | 4.1 | Répartition des tâches | milestone | 0d | 2004-09-17 | 2004-09-17 | 4 | 100% |  |
| 13 | 4.2 | Présentation de l'équipe |  | 1d | 2004-09-17 | 2004-09-17 | 12 | 100% | Fabien APPERT |
| 14 | 4.3 | Définition de la charte graphique |  | 5d | 2004-09-17 | 2004-09-23 | 12 | 100% | Adrien BOUVET |
| 15 | 4.4 | **Consultation du client** |  | 2d | 2004-09-20 | 2004-09-21 |  | 100% |  |
| 16 | 4.4.1 | Réunion | milestone | 0d | 2004-09-20 | 2004-09-20 |  | 100% | Fabien APPERT |
| 17 | 4.4.2 | Bilan des contraintes émises par le client |  | 1d | 2004-09-21 | 2004-09-21 | 16 | 100% | Fabien APPERT |
| 18 | 4.5 | Glossaire des termes importants |  | 8d | 2004-09-22 | 2004-10-01 | 12, 15 | 100% | Guillaume GUERRIN |
| 19 | 4.6 | Liste des acteurs du système |  | 3d | 2004-09-22 | 2004-09-24 | 12, 15 | 100% | Valère FOREL [80%] |
| 20 | 4.7 | Diagramme d'interaction |  | 5d | 2004-09-25 | 2004-10-01 | 19 | 100% | Valère FOREL [80%] |
| 21 | 4.8 | Listes des fonctionnalités |  | 8d | 2004-09-22 | 2004-10-01 | 12, 15 | 100% | Prâsad RAMASSAMY |
| 22 | 4.9 | Réalisation du Logo |  | 6d | 2004-09-22 | 2004-09-29 |  | 100% | Valère FOREL [20%]; Fabien APPERT [50%] |
| 23 | 4.10 | Première visualisation des documents CDC | milestone | 0d | 2004-09-23 | 2004-09-23 |  | 100% |  |
| 24 | 4.11 | Relecture et mise en conformité avec la chartre |  | 2d | 2004-09-28 | 2004-09-29 |  | 100% | Adrien BOUVET |
| 25 | 4.12 | Rendu Pré-Cahier des Charges | milestone | 0d | 2004-09-30 | 2004-09-30 |  | 100% | Jérôme GUERS |
| 26 | 4.13 | Signature du Cahier des Charges | milestone | 0d | 2004-10-04 | 2004-10-04 |  | 100% | Valère FOREL; Prâsad RAMASSAMY; Guillaume GUERRIN; Jérôme GUERS; Fabien APPERT; Adrien BOUVET |

Notes:
- 1: Au cours de la première scéance de TD
- 2: Chef de projet : JG / Responsable client + secrétaire : FA / Responsable Qualité + site web : AB / Responsable développemnt + test : VF / Responsable technique : GG / Responsable interface graphique : PR
- 5: 5 solutions testées : / - Gantt Project / - MS Project / - dotProject / - phpCollab / - eGroupWare
- 12: Réunion d'une heure
- 13: 1h30
- 14: Réalisation d'un .dot / 5 revues : / - 2h / - 1h / - 30min / - 30min / - 1h
- 16: Réunion du 20/09/2004 avec Chrystel ALLEBE
- 17: 2h
- 18: 3h
- 19: 1h
- 20: 1h30
- 21: 3h
- 22: FA : 1h / VF : 2h
- 23: 1h30 de réunion
- 24: 2h

| ID | WBS | Task | Type | Duration | Start | Finish | Predecessors | Complete | Resources |
| --- | --- | --- | --- | --- | --- | --- | --- | --- | --- |
| 27 | 5 | **Mise en place de la communication** |  | 45d | 2004-09-22 | 2004-11-23 |  | 100% |  |
| 28 | 5.1 | Ouverture du compte Hébergeur |  | 1d | 2004-09-22 | 2004-09-22 |  | 100% | Adrien BOUVET [10%] |
| 29 | 5.2 | Création de la mailing list |  | 1d | 2004-09-23 | 2004-09-23 | 28 | 100% | Adrien BOUVET [10%] |
| 30 | 5.3 | Création du forum |  | 4d | 2004-09-23 | 2004-09-28 | 28 | 100% | Adrien BOUVET [40%] |
| 31 | 5.4 | Création compte SVN |  | 1d | 2004-09-25 | 2004-09-27 |  | 100% | Jérôme GUERS [10%] |
| 32 | 5.5 | Description des outils de gestions |  | 15d | 2004-10-22 | 2004-11-11 |  | 100% | Jérôme GUERS [30%]; Adrien BOUVET [50%] |
| 33 | 6 | **Cahier des Charges Fonctionnelles** |  | 33d | 2004-10-05 | 2004-11-18 |  | 100% |  |
| 34 | 6.1 | Formation à la réalisation des UC |  | 1d | 2004-10-05 | 2004-10-05 |  | 100% | Jérôme GUERS [80%] |
| 35 | 6.2 | Répartition des UC à réaliser | milestone | 0d | 2004-10-06 | 2004-10-06 |  | 100% | Valère FOREL; Prâsad RAMASSAMY; Guillaume GUERRIN; Jérôme GUERS [80%]; Fabien APPERT; Adrien BOUVET |
| 36 | 6.3 | **Réalisation des diagrammes UC** |  | 11d | 2004-10-07 | 2004-10-21 | 35 | 100% |  |
| 37 | 6.3.1 | UC Visu infos des enseignants & stats |  | 11d | 2004-10-07 | 2004-10-21 |  | 100% | Fabien APPERT |
| 38 | 6.3.2 | UC Gestion du groupe |  | 11d | 2004-10-07 | 2004-10-21 |  | 100% | Adrien BOUVET |
| 39 | 6.3.3 | UC Gestion Salles&Matériels |  | 11d | 2004-10-07 | 2004-10-21 |  | 100% | Guillaume GUERRIN |
| 40 | 6.3.4 | UC Séances & Indispo Enseignants |  | 11d | 2004-10-07 | 2004-10-21 |  | 100% | Jérôme GUERS [80%] |
| 41 | 6.3.5 | UC Visu d'un EDT & Export |  | 11d | 2004-10-07 | 2004-10-21 |  | 100% | Valère FOREL |
| 42 | 6.3.6 | UC Gestion de l'appli |  | 11d | 2004-10-07 | 2004-10-21 |  | 100% | Prâsad RAMASSAMY |
| 43 | 6.4 | Mise au point avec consultant UML | milestone | 0d | 2004-10-18 | 2004-10-18 |  | 100% | Valère FOREL; Prâsad RAMASSAMY; Guillaume GUERRIN; Jérôme GUERS [80%]; Fabien APPERT; Adrien BOUVET |
| 44 | 6.5 | Structuration en paquetages |  | 9d | 2004-10-19 | 2004-10-29 | 43 | 100% | Fabien APPERT |
| 45 | 6.6 | Réalisation de la documentation des UC |  | 9d | 2004-10-19 | 2004-10-29 |  | 100% | Valère FOREL; Prâsad RAMASSAMY |
| 46 | 6.7 | Première relecture et mise en commun |  | 1d | 2004-10-28 | 2004-10-28 | 45 | 100% | Valère FOREL; Prâsad RAMASSAMY; Guillaume GUERRIN [50%]; Jérôme GUERS [50%]; Fabien APPERT; Adrien BOUVET [50%] |
| 47 | 6.8 | Réalisation des FQM par UC |  | 9d | 2004-10-29 | 2004-11-10 | 46 | 100% | Valère FOREL; Prâsad RAMASSAMY; Fabien APPERT [50%] |
| 48 | 6.9 | Diagramme des paquetages |  | 6d | 2004-10-29 | 2004-11-05 |  | 100% | Fabien APPERT [50%] |
| 49 | 7 | **Spécification de l'IG** |  | 20d | 2004-11-09 | 2004-12-06 |  | 89% |  |
| 50 | 7.1 | Zoning de l'interface |  | 3d | 2004-11-09 | 2004-11-11 |  | 100% | Prâsad RAMASSAMY; Jérôme GUERS [80%]; Fabien APPERT |
| 51 | 7.2 | Définition du mode Gestion |  | 7d | 2004-11-12 | 2004-11-22 | 50 | 100% | Prâsad RAMASSAMY |
| 52 | 7.3 | Description de la fenêtre principale |  | 4d | 2004-11-12 | 2004-11-17 | 50 | 100% | Jérôme GUERS [80%] |
| 53 | 7.4 | Définition des fenêtres de paramètres |  | 3d | 2004-11-16 | 2004-11-18 |  | 100% | Jérôme GUERS [80%] |
| 54 | 7.5 | Définition du mode Exploitation |  | 7d | 2004-11-12 | 2004-11-22 | 50 | 100% | Fabien APPERT |
| 55 | 7.6 | Définition de la Charte Graphique |  | 5d | 2004-11-10 | 2004-11-16 |  | 100% | Adrien BOUVET |
| 56 | 7.7 | Relecture & construction de la documentation finale |  | 4d | 2004-11-15 | 2004-11-18 |  | 100% | Adrien BOUVET |
| 57 | 7.8 | Définition du client léger |  | 4d | 2004-11-15 | 2004-11-18 |  | 100% | Guillaume GUERRIN [50%] |
| 58 | 7.9 | Définition des fenetres d'export |  | 4d | 2004-11-15 | 2004-11-18 |  | 100% | Valère FOREL |
| 59 | 7.10 | Redéfinition de la charte graphique |  | 2d | 2004-11-24 | 2004-11-25 |  | 15% | Adrien BOUVET |
| 60 | 7.11 | Nouvelle relecture |  | 3d | 2004-11-26 | 2004-11-30 |  |  | Jérôme GUERS [80%] |

Notes:
- 28: 10min
- 29: 20min
- 30: 2h
- 31: Recherche d'un hé
- 32: JG : 2h (SVN + outil collaboratif) / AB : 2h (forum, mail, site et relecture)
- 34: 2h de réunion entre chefs de projet pour échanger les connaissances de chaque groupe
- 37: 6h
- 38: 2h
- 39: 1h30
- 40: 2h30
- 41: 3h
- 42: 2h30
- 43: 2 heures de TD Génie Logiciel
- 44: 6h
- 45: VF : 4h30 / PR : 3h
- 46: 4h de réunion pour mise en accord des définitions réalisées
- 47: VF : 4h / PR : 2h
- 48: 6h
- 50: FA : 2h / PR : 3h / FA - JG - PR : 1h30
- 51: PR : 8h
- 52: JG : 4h
- 53: JG : 3h
- 54: FA : 10h
- 55: AB : 1h30
- 56: AB : 6h
- 57: GG : 5h
- 58: VF : 4h
- 59: * Définition des couleurs et de l'aspect - rendu graphique de chacun des composants utilisés (Prévu 2h) / * Recherche de bibliothèques d'icones (Prévu 2h) / AB : 45Min : création nouveau document
- 60: Prévu 3h

| ID | WBS | Task | Type | Duration | Start | Finish | Predecessors | Complete | Resources |
| --- | --- | --- | --- | --- | --- | --- | --- | --- | --- |
| 61 | 8 | **Cahier des charges techniques** |  | 73d | 2004-10-19 | 2005-01-27 |  | 50% |  |
| 62 | 8.1 | **Pré-Rapport technique** |  | 18d | 2004-10-19 | 2004-11-11 |  | 100% |  |
| 63 | 8.1.1 | Elaboration des besoin |  | 2d | 2004-10-19 | 2004-10-20 |  | 100% | Guillaume GUERRIN |
| 64 | 8.1.2 | Correction des besoins |  | 2d | 2004-10-21 | 2004-10-22 | 63 | 100% | Guillaume GUERRIN |
| 65 | 8.1.3 | Recherche des technologies |  | 8d | 2004-10-23 | 2004-11-03 | 64 | 100% | Guillaume GUERRIN [50%] |
| 66 | 8.1.4 | Redaction de la documentation |  | 6d | 2004-10-31 | 2004-11-08 | 65 | 100% |  |
| 67 | 8.2 | **Etude technique** |  | 27d | 2004-11-09 | 2004-12-15 |  | 56% |  |
| 68 | 8.2.1 | Apprentissage de LDAP |  | 6d | 2004-11-09 | 2004-11-16 |  | 100% | Valère FOREL |
| 69 | 8.2.2 | Manipulation des fichiers (XML, Exports, ...) |  | 16d | 2004-11-09 | 2004-11-30 |  | 80% | Guillaume GUERRIN [50%] |
| 70 | 8.2.3 | Test des différentes SGBDR |  | 6d | 2004-11-19 | 2004-11-26 |  | 100% | Valère FOREL |
| 71 | 8.2.4 | Choix de la bibliothèque d'IG |  | 8d | 2004-11-19 | 2004-11-30 |  | 95% | Prâsad RAMASSAMY |
| 72 | 8.2.5 | Définition de l'interface de défintion d'un EDT |  | 9d | 2004-11-27 | 2004-12-09 | 71 |  | Fabien APPERT; Adrien BOUVET |
| 73 | 8.2.6 | Test d'API d'Impression |  | 3d | 2004-11-19 | 2004-11-23 |  | 90% | Fabien APPERT |
| 74 | 8.2.7 | Test JUnit |  | 5d | 2004-11-19 | 2004-11-25 |  | 95% | Adrien BOUVET |
| 75 | 8.2.8 | Gestion du Drag&Drop |  | 5d | 2004-11-22 | 2004-11-26 |  | 75% | Fabien APPERT |
| 76 | 8.2.9 | Outils de compilation |  | 5d | 2004-11-29 | 2004-12-03 |  |  | Jérôme GUERS [50%] |
| 77 | 8.2.10 | Point bilan et d'avancement | milestone | 0d | 2004-11-26 | 2004-11-26 |  | 100% |  |
| 78 | 8.2.11 | Choix du serveur d'application |  | 4d | 2004-11-25 | 2004-11-30 |  | 30% | Valère FOREL |
| 79 | 8.2.12 | Test des bibliothèques d'envoi de mail |  | 4d | 2004-11-25 | 2004-11-30 |  |  | Guillaume GUERRIN |
| 80 | 8.2.13 | Tests des bibliothèques Java-LDAP |  | 5d | 2004-12-01 | 2004-12-07 |  | 80% | Valère FOREL |
| 81 | 8.2.14 | Test des bibliothèques Applications réparties |  | 7d | 2004-11-29 | 2004-12-07 |  |  | Guillaume GUERRIN |
| 82 | 8.2.15 | Test d'hibernate |  | 7d | 2004-11-27 | 2004-12-07 |  | 30% | Prâsad RAMASSAMY [50%] |
| 83 | 8.3 | **Description de l'architecture logicielle** |  | 24d | 2004-11-29 | 2004-12-30 |  |  |  |
| 84 | 8.3.1 | Répartition du travail -> Architecture |  | 2d | 2004-11-29 | 2004-11-30 |  | 10% | Valère FOREL; Jérôme GUERS [30%] |
| 85 | 8.3.2 | Definition du MCD |  | 2d | 2004-12-06 | 2004-12-07 |  |  | Fabien APPERT |
| 86 | 8.3.3 | Rédaction de l'architecture |  | 17d | 2004-12-06 | 2004-12-28 |  |  |  |
| 87 | 8.4 | Relecture finale |  | 3d | 2004-12-27 | 2004-12-29 |  |  | Valère FOREL; Fabien APPERT |
| 88 | 9 | Développement |  | 30d | 2005-01-04 | 2005-02-14 |  |  |  |
| 89 | 10 | Correction et mise en forme |  | 13d | 2005-02-08 | 2005-02-24 |  |  |  |

Notes:
- 63: 1h30
- 64: 1h
- 65: 5h
- 66: 4h
- 68: Découverte de l'arbre de l'annuaire de l'université (Prévu 2h) / VF : 1h
- 69: * Test des différentes bibliothèques de manipulation de fichiers XML & choix de l'API utilisée "t
- 70: * Qualification des différentes SGBDR & choix justifié (Prévu 6h) / Recherche d'info et consignation 1h le 12/11 et 2h le 18/11 / MAJ doc 2h le
- 71: * Documentation sur Swing, SWT et JFace (Prévu 15h) / * Présentation à l'équipe de la préférence (Prévu 2h) / 25 nov. 2004 - 23:04:17 / Recherches sur les choix / écriture de la doc.
- 72: * Recherche des existants (Prévu 15h) / * Développement d'une FlexiAPI (Prévu 20h) / l'API utilisée "t
- 73: * Réalisation d'une documentation d'utilisation + d'une FlexiAPI d'impression (Prévu 6h)
- 74: * Documentation d'utilisation de JUnit (Prévu 6h) / Samedi 20-11: recherche sur Junit 1h30 / Lundi 22-11: tests classes 30min / Mardi 23-11: creation doc 30min / Mercredi 24-11: tests classes 30min / Jeudi 25-11 matin : 2H doc / jeudi 25-11 aprem : 2H doc v1.0 / total : 7H / reste 5% de validation + relecture
- 75: * Recherche sur la gestion Java du Drag&Drop (Prévu 4h) / * Préparation d'une FlexiAPI (Prévu 6h)
- 76: "t
- 78: * Recherche de documentation sur les différents serveurs d'applications présents sur le pré-cahier technique (Prévu 4h) / * Documentation - justification du choix réalisé (Prévu 4h) / Recherche de documentation 1h 28/11 et 29/11
- 79: * Recherche des bibliothèques permettant d'interagir avec le client mail (Prévu 3h) / * Recherche des API d'envoi direct (Prévu 1h) / * Réalisation d'une FlexiAPI d'envoi de mail (Prévu 4h)
- 80: * Etude de l'utilisation de LDAP en JAVA (Prévu 4h) / * Rés> / "t
- 81: * Documentation sur les possibilités définies dans le pré-cahier technique (RMI - Corba - UNO) (Prévu 5h) / * Explication du choix réalisé (Prévu 2h) / mplete="0" fixed-sta006
- 82: PR : / - Qualification d'Hibernate (Prévu 4h) : / 26/10/04 : 30 min
- 84: * VF : Découpage de l'application en paquetage (Prévu 4h) / * JG : Validation + répartition des tâches (Prévu 2h) / Réflexion VF 29/11 30min
